task_id,stage_id,stage_name,task_name,core_feature_deliverable,engineering_track,start_week,end_week,start_week_num,end_week_num,duration_weeks,duration_days,start_date,end_date,dependencies,critical_path,simultaneous_qa_track,owner,role_allocation,person_weeks,blended_weekly_rate_mvnd,base_labor_cost_mvnd,direct_infra_cost_mvnd,base_total_cost_mvnd,contingency_buffer_pct,contingency_buffer_mvnd,buffered_total_cost_mvnd,cost_dist_mean_mvnd,cost_dist_std_mvnd,sprint_drawdown_mvnd,milestone_holdback_mvnd,schedule_citations,estimation_rationale,cost_citations,cost_rationale
T1.1,S1,"1. Planning, Architecture & Specs","Product Discovery, Segment Mapping & Operational Specs",Scope & User Journeys (4 Segments),Product & Design,W1.0,W1.5,0.0,1.5,1.5,10,2027-01-04,2027-01-13,None (Kickoff),Yes,No,PM + Tech Lead,1.0 Tech Lead (16.5M/w) + 1.0 UI/UX Lead (10.0M/w),3.0,13.25,39.75,0.5,40.25,15.0,6.04,46.29,43.27,2.01,40.25,0.0,"Boehm2000, McConnell2006",COCOMO II Inception/Elaboration benchmark allocates 8–10% of core schedule (~1.5 weeks of a 16-week build) to lock requirements across PICK!'s 4 customer segments and front-desk workflows.,"ITviecTopDev2025, VietnamLaborCode2019, PMBOK7th",3.0 person-weeks across Tech Lead (1.5w x 16.5M) + UI/UX Lead (1.5w x 10.0M) = 39.75M labor + 0.50M discovery workshop materials = 40.25M base. Low-complexity internal discovery carries a 15% PMI contingency buffer (+6.04M = 46.29M buffered).
T1.2,S1,"1. Planning, Architecture & Specs","System Architecture, ACID DB Schema & Redis Lock Design","C4 Architecture, PostgreSQL + Redis",Architecture,W2.0,W2.5,1.0,2.5,1.5,10,2027-01-11,2027-01-21,T1.1,Yes,No,Tech Lead / Architect,1.0 Tech Lead (16.5M/w) + 0.5 Sr Full-Stack (12.0M/w),2.25,15.0,33.75,0.5,34.25,15.0,5.14,39.39,36.82,1.71,34.25,0.0,"Boehm2000, Kleppmann2017",Post-Architecture COCOMO II & Kleppmann (2017) emphasize designing distributed slot locks (Redis SETNX/TTL) and ACID ledger schemas upfront (1.5 weeks) to prevent late-stage concurrency rework.,"ITviecTopDev2025, Boehm2000, PMBOK7th",2.25 person-weeks (1.5w Tech Lead @ 16.5M + 0.75w Sr Backend @ 12.0M) = 33.75M labor + 0.50M schema modeling tools = 34.25M base. Standardized PostgreSQL/Redis patterns warrant a 15% buffer (+5.14M = 39.39M buffered).
T1.3,S1,"1. Planning, Architecture & Specs","OpenAPI 3.1 Contracts, UI/UX Design System & Gateway KYB","API Specs, Figma UI & Payment KYB",Design & Specs,W2.5,W3.5,1.5,3.5,2.0,14,2027-01-14,2027-01-27,T1.1,Yes,No,UI/UX + Backend Lead,1.0 UI/UX (10.0M/w) + 0.5 Tech Lead (16.5M/w),3.0,12.17,36.51,1.0,37.51,20.0,7.5,45.01,41.26,2.5,37.51,0.0,"McConnell2006, VNPayPayOS2025","Freezing OpenAPI 3.1 contracts + mobile-first Figma screens takes 1 sprint (2.0 weeks), while initiating corporate KYB with VNPay/MoMo/PayOS early absorbs the 5–7 business day compliance lead time.","ITviecTopDev2025, VNPayPayOS2025, PMBOK7th",3.0 person-weeks (2.0w UI/UX @ 10.0M + 1.0w Tech Lead @ 16.5M) = 36.51M labor + 1.00M Figma Pro & KYB notarization fees = 37.51M base. External merchant KYB document cycles carry a 20% buffer (+7.50M = 45.01M buffered).
T2.1,S2,"2. Infra, DevOps & Core Setup","Cloud Infrastructure (IaC), PostgreSQL & Redis Provisioning","VPC, Managed DB, Redis & CDN",DevOps & Infra,W4.0,W4.5,3.0,4.5,1.5,10,2027-01-25,2027-02-04,T1.2,Yes,No,DevOps / Backend,0.75 DevOps/QA (11.0M/w) + 0.75 Tech Lead (16.5M/w),2.25,13.75,30.94,1.94,32.88,15.0,4.93,37.81,35.35,1.64,32.88,0.0,"DORA2023, AWSWellArch2024","Using Terraform/Docker IaC templates for a modular monolith + managed PostgreSQL & Redis across Staging/Prod environments requires 1.5 weeks including backup, SSL, and VPC security rules.","ITviecTopDev2025, CloudPricingVN2025, PMBOK7th","2.25 person-weeks (1.125w DevOps @ 11.0M + 1.125w Tech Lead @ 16.5M) = 30.94M labor + 1.94M initial cloud VPC/DB/Redis/domain provisioning = 32.88M base, plus 15% buffer (+4.93M = 37.81M buffered)."
T2.2,S2,"2. Infra, DevOps & Core Setup","CI/CD Pipelines, Automated Test Harness & Observability","GitHub Actions, Pytest/Playwright, Sentry",DevOps & QA Infra,W4.5,W5.0,3.5,5.0,1.5,10,2027-01-28,2027-02-07,T2.1,Parallel Track,Yes (Continuous QA),QA + DevOps,1.0 QA/DevOps SDET (11.0M/w),1.5,11.0,16.5,1.5,18.0,15.0,2.7,20.7,19.35,0.9,18.0,0.0,"DORA2023, WQR2024",DORA Elite benchmarks show automated CI/CD test gates and preview environments (1.5 weeks setup) cut downstream defect resolution time by >40% and enable continuous sprint testing.,"ITviecTopDev2025, CloudPricingVN2025, PMBOK7th","1.50 person-weeks of QA/DevOps SDET @ 11.0M/w = 16.50M labor + 1.50M GitHub Actions runner minutes & Sentry observability tier = 18.00M base, plus 15% buffer (+2.70M = 20.70M buffered)."
T2.3,S2,"2. Infra, DevOps & Core Setup","Auth Service, Phone/Zalo OTP & Role-Based Access (RBAC)",Zalo/SMS OTP Login & 4-Role RBAC,Core Backend,W5.0,W5.5,4.0,5.5,1.5,10,2027-02-01,2027-02-10,"T1.3, T2.1",Yes,No,Backend Devs,1.0 Full-Stack (12.0M/w) + 0.5 Tech Lead (16.5M/w),2.25,13.5,30.38,1.5,31.88,15.0,4.78,36.66,34.27,1.59,31.88,0.0,"NextLevelSports2025, OWASP2024","Standard JWT/OAuth2 authentication with Vietnam Zalo/SMS OTP and 4-role RBAC (Player, Coach, Front-Desk, Manager) is benchmarked at 1.5 weeks in sports booking MVP studies.","ITviecTopDev2025, CloudPricingVN2025, PMBOK7th","2.25 person-weeks (1.5w Full-Stack @ 12.0M + 0.75w Tech Lead @ 16.5M) = 30.38M labor + 1.50M Zalo ZNS / eSMS OTP sandbox & sender ID registration = 31.88M base, plus 15% buffer (+4.78M = 36.66M buffered)."
T3.1,S3,3. Core Dev & Simultaneous QA,Real-Time Court Booking Engine & Redis Concurrency Locking,"6-Court Grid, 5-Min Hold & Waitlist",Core Feature Dev,W6.0,W8.0,5.0,8.0,3.0,21,2027-02-08,2027-02-28,T2.3,Yes,No,Full-Stack Squad,0.5 Tech Lead + 1.0 Full-Stack + 0.75 UI/UX FE,6.75,12.67,85.52,1.48,87.0,20.0,17.4,104.4,95.7,5.8,67.86,19.14,"NextLevelSports2025, Kleppmann2017","Core slot-availability engine with Redis distributed 5-minute TTL holds, conflict-free rescheduling, and recurring court blocks takes 1.5 sprints (3.0 weeks) for production reliability.","ITviecTopDev2025, Kleppmann2017, PMBOK7th",6.75 person-weeks across 3.0 calendar weeks (1.5w Tech Lead @ 16.5M + 3.0w Full-Stack @ 12.0M + 2.25w UI/UX FE @ 10.0M) = 85.52M labor + 1.48M staging Redis cluster = 87.00M base. Distributed concurrency state-machines carry a 20% buffer (+17.40M = 104.40M buffered).
T3.2,S3,3. Core Dev & Simultaneous QA,AdaptivePricing ML Engine Integration & Dynamic Tariff API,ML Dynamic Pricing (85k–300k VND),ML & Pricing Dev,W7.5,W9.0,6.5,9.0,2.5,18,2027-02-19,2027-03-07,T3.1,Parallel Track,No,Backend + ML Eng,0.5 Tech Lead (16.5M/w) + 0.75 Full-Stack (12.0M/w),3.125,13.6,42.5,0.99,43.49,20.0,8.7,52.19,47.84,2.9,33.92,9.57,"Boehm2000, InternalAdaptivePricing","Since the HistGBR model & tariff schedule are pre-validated in AdaptivePricing/, wrapping the 16h x 7d dynamic pricing lookup API, off-peak promo badges, and rule overrides takes 2.5 weeks.","ITviecTopDev2025, InternalAdaptivePricing, PMBOK7th",3.125 person-weeks (1.25w Tech Lead @ 16.5M + 1.875w Full-Stack @ 12.0M) = 42.50M labor + 0.99M ML inference container staging = 43.49M base. Dynamic tariff rule edge-cases carry a 20% buffer (+8.70M = 52.19M buffered).
T3.3,S3,3. Core Dev & Simultaneous QA,Payment Gateways (VietQR/PayOS/VNPay/MoMo) & F&B Pre-Order,"Instant QR Checkout, IPN & F&B POS",Payments & Commerce,W8.5,W10.5,7.5,10.5,3.0,21,2027-02-25,2027-03-18,T3.1,Yes,No,Backend + Frontend,1.0 Full-Stack (12.0M/w) + 0.5 UI/UX FE (10.0M/w),4.5,11.33,50.98,2.0,52.98,25.0,13.24,66.22,59.61,4.42,41.32,11.66,"VNPayPayOS2025, SaigonTech2024","Vietnamese payment integration benchmarks (1–2 wks sandbox coding for HMAC-SHA256 signatures, idempotent IPN webhooks, auto-refunds + 1 wk F&B/paddle add-on cart) total 3.0 weeks.","ITviecTopDev2025, VNPayPayOS2025, PMBOK7th",4.50 person-weeks (3.0w Full-Stack @ 12.0M + 1.5w UI/UX FE @ 10.0M) = 50.98M labor + 2.00M multi-gateway sandbox/webhook tunnel infra = 52.98M base. Third-party fintech APIs & webhook retries carry a 25% buffer (+13.25M = 66.23M buffered).
T3.4,S3,3. Core Dev & Simultaneous QA,"PICK! Social Hub: Skill Rating, Open-Play Matching & Coaching","ELO/DUPR Lobby, Open-Play & Coaches",Social & Community,W9.5,W12.0,8.5,12.0,3.5,24,2027-03-05,2027-03-28,T3.1,Yes,No,Full-Stack Squad,1.0 Full-Stack (12.0M/w) + 1.0 UI/UX FE (10.0M/w),7.0,11.0,77.0,1.5,78.5,25.0,19.62,98.12,88.32,6.54,61.23,17.27,"McConnell2006, NextLevelSports2025","Differentiating Path C requires player skill tiers, 'Find-a-Game' 4-player balanced open-play matchmaking, split-court payments, and coach booking calendars—scoped at 3.5 weeks (1.75 sprints).","ITviecTopDev2025, NextLevelSports2025, PMBOK7th",7.00 person-weeks across 3.5 calendar weeks (3.5w Full-Stack @ 12.0M + 3.5w UI/UX FE @ 10.0M) = 77.00M labor + 1.50M push notification & lobby websocket infra = 78.50M base. Custom 4-player split-payment & ELO matchmaking UX carries a 25% buffer (+19.63M = 98.13M buffered).
T3.5,S3,3. Core Dev & Simultaneous QA,"Admin Portal, Front-Desk QR Check-In & Financial Ledger","Staff POS, QR Check-In & P&L Export",Admin & Operations,W11.5,W13.0,10.5,13.0,2.5,18,2027-03-19,2027-04-04,"T3.3, T3.4",Yes,No,Frontend + Backend,0.75 Full-Stack (12.0M/w) + 0.75 UI/UX FE (10.0M/w),3.75,11.0,41.25,4.74,45.99,15.0,6.9,52.89,49.44,2.3,35.87,10.12,NextLevelSports2025,"Staff check-in scanner, walk-in manual booking override, court maintenance blocks, and automated daily Revenue/COGS export for FinancialModel take 2.5 weeks.","ITviecTopDev2025, CloudPricingVN2025, PMBOK7th",3.75 person-weeks (1.875w Full-Stack @ 12.0M + 1.875w UI/UX FE @ 10.0M) = 41.25M labor + 4.74M front-desk 2D QR handheld scanners & tablet stand hardware = 45.99M base. Internal admin CRUD carries a 15% buffer (+6.90M = 52.89M buffered).
T3.6,S3,3. Core Dev & Simultaneous QA,"[Simultaneous QA] Continuous Unit, API Contract & Sprint Testing",Shift-Left CI Tests (>80% Coverage),Simultaneous QA,W6.0,W13.0,5.0,13.0,8.0,56,2027-02-08,2027-04-04,T2.2,Parallel Track,Yes (Continuous QA),QA + All Devs,0.50 QA/DevOps SDET + 0.0625 Dev Test Review across 8w,4.5,11.11,49.99,4.8,54.79,20.0,10.96,65.75,60.28,3.65,42.74,12.05,"CapersJones2012, WQR2024, DORA2023","Per Capers Jones & DORA continuous testing principles, embedding automated unit, API contract, and Playwright component tests simultaneously across all 8 weeks of Stage 3 prevents end-of-cycle QA bottlenecks.","ITviecTopDev2025, CapersJones2012, WQR2024","4.50 person-weeks across 8.0 calendar weeks (4.0w QA SDET @ 11.0M + 0.5w Full-Stack test harness support @ 12.0M) = 50.00M labor + 4.80M parallel CI test runners & BrowserStack mobile device cloud = 54.80M base, plus 20% buffer (+10.96M = 65.76M buffered)."
T4.1,S4,"4. Final Integration, Load & UAT",End-to-End (E2E) Integration & Payment Gateway Certification,Cross-Module E2E & Live Gateway Keys,System Integration,W14.0,W14.5,13.0,14.5,1.5,10,2027-04-05,2027-04-15,"T3.5, T3.6",Yes,Yes (Continuous QA),Tech Lead + QA,0.75 Tech Lead + 0.75 QA SDET + 0.50 Full-Stack,3.0,13.38,40.14,3.11,43.25,20.0,8.65,51.9,47.58,2.88,43.25,0.0,"VNPayPayOS2025, IEEE1012",Full E2E checkout-to-ledger verification plus VNPay/MoMo/PayOS provider compliance review (2–3 working days per gateway + webhook edge-case re-tests) requires 1.5 weeks.,"ITviecTopDev2025, VNPayPayOS2025, PMBOK7th","3.00 person-weeks (1.125w Tech Lead @ 16.5M + 1.125w QA @ 11.0M + 0.75w Full-Stack @ 12.0M) = 40.14M labor + 3.11M live gateway certification & penny-test settlement float = 43.25M base, plus 20% buffer (+8.65M = 51.90M buffered)."
T4.2,S4,"4. Final Integration, Load & UAT",Peak Concurrency Load Testing (k6) & Security/PDPD Audit,500-User Rush Stress Test & OWASP,Performance & Sec,W14.5,W15.0,13.5,15.0,1.5,10,2027-04-08,2027-04-18,T3.5,Parallel Track,Yes (Continuous QA),DevOps + Sec/QA,0.75 QA/DevOps (11.0M/w) + 0.50 Tech Lead (16.5M/w),1.875,13.2,24.75,9.13,33.88,25.0,8.47,42.35,38.12,2.82,33.88,0.0,"OWASP2024, Kleppmann2017","Simulating 500 concurrent 17:00 peak booking requests against Redis locks (<150ms p95, 0 double-bookings) and remediating OWASP Top 10 / Decree 13 PDPD findings requires 1.5 weeks.","ITviecTopDev2025, OWASP2024, CloudPricingVN2025",1.875 person-weeks (1.125w QA/DevOps + 0.75w Tech Lead) = 24.75M labor + 9.13M distributed k6 cloud load generators & external OWASP/PDPD vulnerability scan tools = 33.88M base. Remediation of stress/security findings carries a 25% buffer (+8.47M = 42.35M buffered).
T4.3,S4,"4. Final Integration, Load & UAT",Staff Training & Pilot User Acceptance Testing (UAT),Staff + 50-Player Beta UAT Sign-Off,UAT & Readiness,W15.5,W16.0,14.5,16.0,1.5,10,2027-04-16,2027-04-25,"T4.1, T4.2",Yes,Yes (Continuous QA),PM + Club Ops + QA,0.5 Tech Lead + 1.0 UI/UX FE + 0.5 QA SDET,3.0,12.0,36.0,5.5,41.5,20.0,8.3,49.8,45.65,2.77,41.5,0.0,"McConnell2006, NextLevelSports2025","McConnell & sports platform benchmarks allocate ~10% of build schedule (1.5 weeks) for hands-on facility staff training, 50-player pilot UAT across all 4 segments, and RC bug triage—completing Month 4.","ITviecTopDev2025, McConnell2006, PMBOK7th","3.00 person-weeks (0.75w Tech Lead + 1.5w UI/UX FE + 0.75w QA) = 36.00M labor + 5.50M on-site staff training materials & 50-player pilot court voucher incentives = 41.50M base, plus 20% UAT feedback buffer (+8.30M = 49.80M buffered)."
T5.1,S5,5. Legacy Migration & Cutover,"Legacy Data Audit, Cleansing & ETL (Zalo/Sheets to Postgres)","ETL of 1,150 Accounts & 3,600 Players",Data Migration,W17.0,W17.5,16.0,17.5,1.5,10,2027-04-26,2027-05-05,T4.3,Yes,No,Backend + Club Ops,1.0 Full-Stack (12.0M/w) + 0.5 QA SDET (11.0M/w),2.25,11.67,26.26,2.24,28.5,25.0,7.12,35.62,32.07,2.38,28.5,0.0,"Kimball2013, NextLevelSports2025","Cleaning unstructured Zalo/Excel records (1,150 registered accounts, prepaid coaching packs, recurring bookings) and running 2 staging ETL dry runs takes 1.5 weeks per Kimball ETL benchmarks.","ITviecTopDev2025, Kimball2013, PMBOK7th",2.25 person-weeks (1.5w Full-Stack @ 12.0M + 0.75w QA @ 11.0M) = 26.26M labor + 2.24M staging ETL snapshot storage & data reconciliation scripts = 28.50M base. Unstructured Zalo/Excel data cleansing carries a 25% buffer (+7.13M = 35.63M buffered).
T5.2,S5,5. Legacy Migration & Cutover,Parallel Shadow Run & Priority Cohort Soft Launch,2-Week Dual Run & VIP Onboarding,Phased Rollout,W18.0,W19.0,17.0,19.0,2.0,14,2027-05-03,2027-05-16,T5.1,Yes,No,Full Team + Front Desk,0.75 Full-Stack + 0.50 QA + 0.25 Tech Lead,3.0,11.58,34.74,3.27,38.01,20.0,7.6,45.61,41.81,2.53,38.01,0.0,"Kimball2013, McConnell2006",A 2-week parallel run (2 full weekly cycles of weekday off-peak + weekend peak) validates zero booking discrepancies between front-desk staff and online self-service before legacy shutoff.,"ITviecTopDev2025, Kimball2013, CloudPricingVN2025","3.00 person-weeks across 2.0 weeks of parallel shadow operation = 34.74M labor + 3.27M production cloud + VIP soft-launch Zalo ZNS onboarding notifications = 38.01M base, plus 20% buffer (+7.60M = 45.61M buffered)."
T5.3,S5,5. Legacy Migration & Cutover,Legacy Booking Cutover & 100% Self-Service Public Launch,Retire Manual Zalo Booking & Go-Live,Cutover & Launch,W20.0,W20.0,19.0,20.0,1.0,7,2027-05-17,2027-05-23,T5.2,Yes,No,Tech Lead + Manager,0.5 Tech Lead + 1.0 Full-Stack + 0.5 UI/UX FE,2.0,12.63,25.26,5.24,30.5,15.0,4.58,35.08,32.79,1.53,30.5,0.0,NextLevelSports2025,"Off-peak Sunday night final delta sync, switching Zalo OA to automated web-booking deep links, and full public launch execution takes 1.0 week.","ITviecTopDev2025, CloudPricingVN2025, PMBOK7th","2.00 person-weeks during cutover week = 25.26M labor + 5.24M SMS/Zalo OA blast to 3,600 monthly players & on-court QR standees = 30.50M base, plus 15% buffer (+4.58M = 35.08M buffered)."
T6.1,S6,6. Feedback & Continuous Ops,"Post-Launch Hypercare, SLA Monitoring & Hotfix Patching",Peak-Hour On-Call & Rapid Patching,Hypercare & Patching,W20.0,W22.0,19.0,22.0,3.0,21,2027-05-17,2027-06-06,T5.2,Parallel Track,Yes (Continuous QA),On-Call Eng + QA,0.50 Full-Stack + 0.50 QA/DevOps across 3w,3.0,11.5,34.5,3.0,37.5,20.0,7.5,45.0,41.25,2.5,37.5,0.0,"ITILv4, DORA2023",ITIL v4 & DORA post-cutover hypercare standards recommend a 3-week stabilization window (1 full monthly billing cycle) with <2hr hotfix SLA for mobile browser and payment edge cases.,"ITviecTopDev2025, ITILv4, CloudPricingVN2025","3.00 person-weeks (1.5w Full-Stack @ 12.0M + 1.5w QA/DevOps @ 11.0M) = 34.50M labor + 3.00M production cloud & APM hypercare alerting = 37.50M base, plus 20% hotfix surge buffer (+7.50M = 45.00M buffered)."
T6.2,S6,6. Feedback & Continuous Ops,"User Telemetry Analysis, UX Tuning & ML Pricing Calibration",Funnel Optimization & Live ML Retrain,Analytics & ML Ops,W21.5,W24.0,20.5,24.0,3.5,24,2027-05-28,2027-06-20,T5.3,Parallel Track,No,ML Eng + Product,0.43 Tech Lead/ML + 0.43 UI/UX FE across 3.5w,3.0,13.25,39.75,5.25,45.0,20.0,9.0,54.0,49.5,3.0,45.0,0.0,"Kohavi2020, InternalAdaptivePricing",Collecting 30 days of live post-cutover booking elasticity data plus 0.5 weeks to recalibrate the HistGBR demand model and tune checkout conversion funnels requires 3.5 weeks.,"ITviecTopDev2025, Kohavi2020, CloudPricingVN2025","3.00 person-weeks (1.5w Tech Lead/ML @ 16.5M + 1.5w UI/UX FE @ 10.0M) = 39.75M labor + 5.25M PostHog/Mixpanel telemetry & ML retraining compute = 45.00M base, plus 20% buffer (+9.00M = 54.00M buffered)."
T6.3,S6,6. Feedback & Continuous Ops,"Continuous Feature Releases (Tournaments, Loyalty) & CI/CD",Bi-Weekly Agile Releases & Regression,Continuous Delivery,W22.0,W24.0,21.0,24.0,3.0,21,2027-05-31,2027-06-20,T6.1,Parallel Track,Yes (Continuous QA),Product Squad,0.75 Full-Stack + 0.50 UI/UX FE + 0.25 QA across 3w,4.5,11.17,50.27,5.25,55.52,15.0,8.33,63.85,59.69,2.78,55.52,0.0,DORA2023,"Transitioning into steady-state bi-weekly sprint cadences (automated tournament brackets, referral rewards, push notifications) with continuous regression testing across Weeks 21–24+.","ITviecTopDev2025, DORA2023, CloudPricingVN2025","4.50 person-weeks (2.25w Full-Stack @ 12.0M + 1.5w UI/UX FE @ 10.0M + 0.75w QA @ 11.0M) = 50.27M labor + 5.25M production cloud & notification credits = 55.52M base, plus 15% buffer (+8.33M = 63.85M buffered)."
